# UNO Práctica

Schedule from MS Project, 2017-08-01 to 2018-12-13, costs in €.
SIMA S.A

## Calendars

- SIMACALENDAR: Mon 13:00-17:00; Tue-Fri 08:00-14:00; Sat-Sun off.

## Resources

| Resource | Rate |
| --- | --- |
| Analista de Sistemas | 61.8 |
| Especificador de Casos de Uso | 46.35 |
| Diseñador de Interfaz de Usuario | 41.2 |
| Arquitecto | 56.65 |
| Ingeniero de Casos de Uso | 51.5 |
| Ingeniero de Componentes | 56.65 |
| HW para la Implementación |  |
| Licencias de Software |  |
| Gastos de Representación y Viáticos |  |
| Administrador de Proyecto | 72.1 |
| Implementador | 51.5 |
| Gestor de BD | 56.65 |

## Schedule

| ID | WBS | Task | Type | Duration | Start | Finish | Predecessors | Baseline start | Baseline finish | Baseline duration | Total slack | Free slack | Resources | Work | Cost | Baseline cost |
| --- | --- | --- | --- | --- | --- | --- | --- | --- | --- | --- | --- | --- | --- | --- | --- | --- |
| 1 | 1 | **Hitos del Proyecto** |  | 250.12d | 2017-08-01 | 2018-12-13 |  | 2017-11-10 | 2019-03-26 | 250.42d | 0d |  |  |  |  |  |
| 2 | 1.1 | Inicio del Proyecto | milestone | 0d | 2017-08-01 | 2017-08-01 |  | 2017-11-10 | 2017-11-10 | 0d | 250.12d |  |  |  |  |  |
| 3 | 1.2 | Definición del Sistema | milestone | 0d | 2017-08-14 | 2017-08-14 | 11 | 2017-11-22 | 2017-11-22 | 0d | 244.12d |  |  |  |  |  |
| 4 | 1.3 | 1era Entrega Operativa de Software | milestone | 0d | 2018-03-16 | 2018-03-16 | 128 | 2018-06-26 | 2018-06-26 | 0d | 136.46d |  |  |  |  |  |
| 5 | 1.4 | 2a Entrega Operativa de Software | milestone | 0d | 2018-05-21 | 2018-05-21 | 184 | 2018-08-29 | 2018-08-29 | 0d | 104.12d |  |  |  |  |  |
| 6 | 1.5 | 3era Entrega Operativa de Software | milestone | 0d | 2018-10-17 | 2018-10-17 | 241 | 2019-01-28 | 2019-01-28 | 0d | 28.79d |  |  |  |  |  |
| 7 | 1.6 | 4a Entrega Operativa de Software | milestone | 0d | 2018-11-30 | 2018-11-30 | 285 | 2019-03-13 | 2019-03-13 | 0d | 6.46d |  |  |  |  |  |
| 8 | 1.7 | Fin del Proyecto | milestone | 0d | 2018-12-13 | 2018-12-13 | 295 | 2019-03-26 | 2019-03-26 | 0d | 0d |  |  |  |  |  |
| 10 | 2 | **Fase Inicial** |  | 10.38d | 2017-08-01 | 2017-08-22 |  | 2017-11-10 | 2017-12-01 | 10.75d | 3.71d |  |  | 208h | 15,186.85 | 15,186.85 |
| 11 | 2.1 | **Workflow de Requisitos** |  | 6d | 2017-08-01 | 2017-08-14 |  | 2017-11-10 | 2017-11-22 | 6d | 3.71d | 0d | Gastos de Representación y Viáticos | 120h | 9,256.8 | 9,256.8 |
| 12 | 2.1.1 | **Analizar el Problema** |  | 4d | 2017-08-01 | 2017-08-09 |  | 2017-11-10 | 2017-11-17 | 4d | 5.71d |  |  | 64h | 3,955.2 | 3,955.2 |
| 13 | 2.1.1.1 | Glorario de Términos |  | 1d | 2017-08-01 | 2017-08-03 |  | 2017-11-10 | 2017-11-13 | 1d | 8.71d |  | Analista de Sistemas | 8h | 494.4 | 494.4 |
| 14 | 2.1.1.2 | Identificar Actores |  | 3d | 2017-08-01 | 2017-08-08 |  | 2017-11-10 | 2017-11-16 | 3d | 6.71d | 1d | Analista de Sistemas | 24h | 1,483.2 | 1,483.2 |
| 15 | 2.1.1.3 | Identificar Casos de Uso |  | 4d | 2017-08-01 | 2017-08-09 | 14FF | 2017-11-10 | 2017-11-17 | 4d | 5.71d |  | Analista de Sistemas | 32h | 1,977.6 | 1,977.6 |
| 16 | 2.1.2 | **Definición del Sistema** |  | 5d | 2017-08-01 | 2017-08-10 |  | 2017-11-10 | 2017-11-21 | 5d | 3.71d |  |  | 40h | 1,854 | 1,854 |
| 17 | 2.1.2.1 | Estructurar Modelo Casos de Uso |  | 5d | 2017-08-01 | 2017-08-10 |  | 2017-11-10 | 2017-11-21 | 5d | 3.71d | 0d | Especificador de Casos de Uso | 40h | 1,854 | 1,854 |
| 18 | 2.1.3 | **Definición de Alcance** |  | 1d | 2017-08-10 | 2017-08-14 |  | 2017-11-21 | 2017-11-22 | 1d | 3.71d |  |  | 8h | 453.2 | 453.2 |
| 19 | 2.1.3.1 | Priorizar Casos de Uso |  | 1d | 2017-08-10 | 2017-08-14 | 17 | 2017-11-21 | 2017-11-22 | 1d | 3.71d |  | Arquitecto | 8h | 453.2 | 453.2 |
| 20 | 2.1.4 | Administración de Cambios de Requisitos |  | 1d | 2017-08-07 | 2017-08-08 |  | 2017-11-13 | 2017-11-14 | 1d | 6.33d |  | Analista de Sistemas | 8h | 494.4 | 494.4 |
| 21 | 2.2 | **Workflow Administración de la Configuración** |  | 4.5d | 2017-08-14 | 2017-08-22 |  | 2017-11-22 | 2017-12-01 | 5d | 239.75d |  |  | 40h | 2,702.72 | 2,702.72 |
| 22 | 2.2.1 | Establecer el Proceso de Admon de la Configuración |  | 1d | 2017-08-14 | 2017-08-15 |  | 2017-11-22 | 2017-11-23 | 1d | 243.25d |  | Administrador de Proyecto [66.7%]; Analista de Sistemas [66.7%] | 8h | 549.33 | 549.33 |
| 23 | 2.2.2 | Establecer el Entorno de Admon de la Configuración |  | 4d | 2017-08-14 | 2017-08-22 |  | 2017-11-23 | 2017-12-01 | 4d | 239.75d |  | Administrador de Proyecto [53.3%]; Analista de Sistemas [53.3%] | 32h | 2,153.39 | 2,153.39 |
| 24 | 2.3 | **Workflow Administración del Proyecto** |  | 6d | 2017-08-07 | 2017-08-17 |  | 2017-11-15 | 2017-11-27 | 6d | 241.75d |  |  | 48h | 3,227.33 | 3,227.33 |
| 25 | 2.3.1 | Análisis de Riesgos |  | 5d | 2017-08-08 | 2017-08-17 | 26 | 2017-11-16 | 2017-11-27 | 5d | 241.75d |  | Administrador de Proyecto [50%]; Analista de Sistemas [50%] | 40h | 2,678 | 2,678 |
| 26 | 2.3.2 | Desarrollar la Planificación del Proyecto |  | 1d | 2017-08-07 | 2017-08-08 |  | 2017-11-15 | 2017-11-16 | 1d | 241.75d | 0d | Administrador de Proyecto [66.7%]; Analista de Sistemas [66.7%] | 8h | 549.33 | 549.33 |

| ID | WBS | Task | Duration | Start | Finish | Predecessors | Baseline start | Baseline finish | Baseline duration | Total slack | Free slack | Resources | Work | Cost | Baseline cost |
| --- | --- | --- | --- | --- | --- | --- | --- | --- | --- | --- | --- | --- | --- | --- | --- |
| 27 | 3 | **Fase de Elaboración** | 140d | 2017-08-14 | 2018-05-21 | 11 | 2017-11-22 | 2018-08-29 | 140d | 3.71d | 0d |  | 3008h | 170,358.9 | 170,358.9 |
| 28 | 3.1 | **Iteración 1** | 56.33d | 2017-08-14 | 2017-12-04 |  | 2017-11-22 | 2018-03-15 | 56.33d | 3.71d |  |  | 816h | 52,506.3 | 52,506.3 |
| 29 | 3.1.1 | **Workflow de Requisitos** | 10d | 2017-08-14 | 2017-09-01 |  | 2017-11-22 | 2017-12-12 | 10d | 3.71d | 0d |  | 160h | 7,488.1 | 7,488.1 |
| 30 | 3.1.1.1 | **Analizar el Problema** | 0.5d | 2017-08-14 | 2017-08-15 |  | 2017-11-22 | 2017-11-23 | 0.5d | 13.21d |  |  | 4h | 247.2 | 247.2 |
| 31 | 3.1.1.1.1 | Glorario de Términos | 0.5d | 2017-08-14 | 2017-08-15 |  | 2017-11-22 | 2017-11-23 | 0.5d | 13.21d |  | Analista de Sistemas | 4h | 247.2 | 247.2 |
| 32 | 3.1.1.2 | **Definición del Sistema** | 6d | 2017-08-14 | 2017-08-24 |  | 2017-11-22 | 2017-12-05 | 6d | 3.71d |  |  | 88h | 3,934.6 | 3,934.6 |
| 33 | 3.1.1.2.1 | Detallar Casos de Uso | 5d | 2017-08-14 | 2017-08-23 |  | 2017-11-22 | 2017-12-01 | 5d | 3.71d | 0d | Especificador de Casos de Uso [50%]; Implementador [50%] | 40h | 1,957 | 1,957 |
| 34 | 3.1.1.2.2 | Prototipar Casos de Uso | 6d | 2017-08-14 | 2017-08-24 |  | 2017-11-22 | 2017-12-05 | 6d | 7.71d |  | Diseñador de Interfaz de Usuario | 48h | 1,977.6 | 1,977.6 |
| 35 | 3.1.1.3 | **Definición de Alcance** | 0.5d | 2017-08-14 | 2017-08-15 |  | 2017-11-22 | 2017-11-23 | 0.5d | 13.21d |  |  | 4h | 226.6 | 226.6 |
| 36 | 3.1.1.3.1 | Priorizar Casos de Uso | 0.5d | 2017-08-14 | 2017-08-15 |  | 2017-11-22 | 2017-11-23 | 0.5d | 13.21d |  | Arquitecto | 4h | 226.6 | 226.6 |
| 37 | 3.1.1.4 | **Refinar la Definición del Sistema** | 10d | 2017-08-14 | 2017-09-01 |  | 2017-11-22 | 2017-12-12 | 10d | 3.71d |  |  | 60h | 2,832.5 | 2,832.5 |
| 38 | 3.1.1.4.1 | Refinar Casos de Uso | 5d | 2017-08-23 | 2017-09-01 | 33 | 2017-12-01 | 2017-12-12 | 5d | 3.71d |  | Especificador de Casos de Uso | 40h | 1,854 | 1,854 |
| 39 | 3.1.1.4.2 | Refinar Modelo de Caso de Uso | 2.5d | 2017-08-14 | 2017-08-17 |  | 2017-11-22 | 2017-11-28 | 2.5d | 10.71d | 0d | Especificador de Casos de Uso [50%]; Implementador [50%] | 20h | 978.5 | 978.5 |
| 40 | 3.1.1.5 | Administración de Cambios de Requisitos | 0.5d | 2017-08-17 | 2017-08-18 | 39 | 2017-11-28 | 2017-11-28 | 0.5d | 10.71d |  | Analista de Sistemas | 4h | 247.2 | 247.2 |
| 41 | 3.1.2 | **Workflow de Análisis** | 22.33d | 2017-09-01 | 2017-10-17 | 29 | 2017-12-13 | 2018-01-25 | 22.33d | 3.71d | 0d |  | 240h | 12,895.6 | 12,895.6 |
| 42 | 3.1.2.1 | **Análisis del Comportamiento** | 22.33d | 2017-09-01 | 2017-10-17 |  | 2017-12-13 | 2018-01-25 | 22.33d | 3.71d |  |  | 240h | 12,895.6 | 12,895.6 |
| 43 | 3.1.2.1.1 | **Análisis de la Arquitectura** | 7d | 2017-09-01 | 2017-09-15 |  | 2017-12-13 | 2017-12-26 | 7d | 3.71d |  |  | 56h | 3,172.4 | 3,172.4 |
| 44 | 3.1.2.1.1.1 | Identifica Clases de Análisis | 5d | 2017-09-01 | 2017-09-12 | 17FS-3d | 2017-12-13 | 2017-12-21 | 5d | 3.71d | 0d | Arquitecto | 40h | 2,266 | 2,266 |
| 45 | 3.1.2.1.1.2 | Identificar Paquetes de Análisis | 2d | 2017-09-12 | 2017-09-15 | 44 | 2017-12-22 | 2017-12-26 | 2d | 19.04d |  | Arquitecto | 16h | 906.4 | 906.4 |
| 46 | 3.1.2.1.2 | **Análisis de Casos de Uso** | 13.33d | 2017-09-11 | 2017-10-06 |  | 2017-12-20 | 2018-01-16 | 13.33d | 3.71d |  |  | 112h | 5,768 | 5,768 |
| 47 | 3.1.2.1.2.1 | Diagramas de Clases de Análisis | 10d | 2017-09-11 | 2017-09-29 | 44FS-1d | 2017-12-20 | 2018-01-09 | 10d | 7.04d | 0d | Ingeniero de Casos de Uso | 48h | 2,472 | 2,472 |
| 48 | 3.1.2.1.2.2 | Diagramas de Colaboración | 13.33d | 2017-09-11 | 2017-10-06 | 44FS-1d | 2017-12-20 | 2018-01-16 | 13.33d | 3.71d | 0d | Ingeniero de Casos de Uso | 64h | 3,296 | 3,296 |
| 49 | 3.1.2.1.3 | **Análisis de Paquetes** | 1d | 2017-10-06 | 2017-10-09 |  | 2018-01-16 | 2018-01-18 | 1d | 5.71d |  |  | 8h | 453.2 | 453.2 |
| 50 | 3.1.2.1.3.1 | Paquetes de Análisis | 1d | 2017-10-06 | 2017-10-09 | 47, 48 | 2018-01-16 | 2018-01-18 | 1d | 5.71d | 0d | Ingeniero de Componentes | 8h | 453.2 | 453.2 |

| ID | WBS | Task | Duration | Start | Finish | Predecessors | Baseline start | Baseline finish | Baseline duration | Total slack | Free slack | Resources | Work | Cost | Baseline cost |
| --- | --- | --- | --- | --- | --- | --- | --- | --- | --- | --- | --- | --- | --- | --- | --- |
| 51 | 3.1.2.1.4 | **Análisis de Datos** | 3d | 2017-10-06 | 2017-10-12 |  | 2018-01-16 | 2018-01-23 | 3d | 3.71d |  |  | 24h | 1,359.6 | 1,359.6 |
| 52 | 3.1.2.1.4.1 | Análisis de la BD | 3d | 2017-10-06 | 2017-10-12 | 47, 48 | 2018-01-16 | 2018-01-23 | 3d | 3.71d | 0d | Gestor de BD | 24h | 1,359.6 | 1,359.6 |
| 53 | 3.1.2.1.5 | **Refinar el Análisis** | 7.33d | 2017-10-03 | 2017-10-17 |  | 2018-01-11 | 2018-01-25 | 7.33d | 3.71d |  |  | 40h | 2,142.4 | 2,142.4 |
| 54 | 3.1.2.1.5.1 | Refinar Diagramas de Clases de Análisis | 1.67d | 2017-10-03 | 2017-10-05 | 47FS+1d | 2018-01-11 | 2018-01-15 | 1.67d | 9.38d | 5.67d | Ingeniero de Casos de Uso | 8h | 412 | 412 |
| 55 | 3.1.2.1.5.2 | Refinar Diagramas de Colaboración | 3.33d | 2017-10-09 | 2017-10-16 | 48FS+1d | 2018-01-18 | 2018-01-24 | 3.33d | 4.38d | 0.67d | Ingeniero de Casos de Uso | 16h | 824 | 824 |
| 56 | 3.1.2.1.5.3 | Refinar BD | 1d | 2017-10-13 | 2017-10-17 | 52FS+1d | 2018-01-24 | 2018-01-25 | 1d | 3.71d |  | Gestor de BD | 8h | 453.2 | 453.2 |
| 57 | 3.1.2.1.5.4 | Refinar Paquetes de Análisis | 1d | 2017-10-11 | 2017-10-12 | 50FS+1d | 2018-01-19 | 2018-01-23 | 1d | 5.71d |  | Ingeniero de Componentes | 8h | 453.2 | 453.2 |
| 58 | 3.1.3 | **Workflow de Diseño** | 24d | 2017-10-17 | 2017-12-04 | 41 | 2018-01-25 | 2018-03-15 | 24d | 87.38d |  | HW para la Implementación; Licencias de Software | 416h | 32,122.6 | 32,122.6 |
| 59 | 3.1.3.1 | **Diseño de la Arquitectura** | 6d | 2017-10-17 | 2017-10-27 |  | 2018-01-25 | 2018-02-07 | 6d | 87.38d |  |  | 72h | 4,449.6 | 4,449.6 |
| 60 | 3.1.3.1.1 | Identifica Clases de Diseño | 6d | 2017-10-17 | 2017-10-27 | 54, 55 | 2018-01-25 | 2018-02-07 | 6d | 87.38d | 0d | Arquitecto | 48h | 2,966.4 | 2,966.4 |
| 61 | 3.1.3.1.2 | Identificar Paquetes de Diseño | 3d | 2017-10-17 | 2017-10-23 | 54, 55 | 2018-01-25 | 2018-02-01 | 3d | 108.38d |  | Arquitecto | 24h | 1,483.2 | 1,483.2 |
| 62 | 3.1.3.2 | **Diseño de Casos de Uso** | 13d | 2017-10-27 | 2017-11-23 |  | 2018-02-07 | 2018-03-06 | 13d | 87.38d |  |  | 216h | 12,236.4 | 12,236.4 |
| 63 | 3.1.3.2.1 | Diagramas de Clases de Diseño | 9d | 2017-10-27 | 2017-11-15 | 60 | 2018-02-07 | 2018-02-26 | 9d | 91.38d | 0d | Ingeniero de Casos de Uso [50%]; Analista de Sistemas [50%] | 72h | 4,078.8 | 4,078.8 |
| 64 | 3.1.3.2.2 | Diagramas de Colaboración | 13d | 2017-10-27 | 2017-11-23 | 60 | 2018-02-07 | 2018-03-06 | 13d | 87.38d | 0d | Ingeniero de Casos de Uso [50%]; Analista de Sistemas [50%] | 104h | 5,891.6 | 5,891.6 |
| 65 | 3.1.3.2.3 | Diagrama de Despliegue | 3d | 2017-10-27 | 2017-11-03 | 60 | 2018-02-07 | 2018-02-13 | 3d | 101.88d | 0d | Ingeniero de Casos de Uso [50%]; Analista de Sistemas [50%] | 24h | 1,359.6 | 1,359.6 |
| 66 | 3.1.3.2.4 | Diagramas de Estado | 2d | 2017-10-27 | 2017-11-01 | 60 | 2018-02-07 | 2018-02-12 | 2d | 102.38d | 0d | Ingeniero de Casos de Uso [50%]; Analista de Sistemas [50%] | 16h | 906.4 | 906.4 |
| 67 | 3.1.3.3 | **Diseño de Paquetes** | 2d | 2017-11-23 | 2017-11-28 |  | 2018-03-06 | 2018-03-08 | 2d | 89.88d |  |  | 16h | 906.4 | 906.4 |
| 68 | 3.1.3.3.1 | Paquetes de Diseño | 2d | 2017-11-23 | 2017-11-28 | 63, 64 | 2018-03-06 | 2018-03-08 | 2d | 89.88d | 0d | Ingeniero de Componentes | 16h | 906.4 | 906.4 |
| 69 | 3.1.3.4 | **Diseño de Datos** | 3d | 2017-11-23 | 2017-11-29 |  | 2018-03-06 | 2018-03-12 | 3d | 87.38d |  |  | 24h | 1,359.6 | 1,359.6 |
| 70 | 3.1.3.4.1 | Diseño de la BD | 3d | 2017-11-23 | 2017-11-29 | 63, 64 | 2018-03-06 | 2018-03-12 | 3d | 87.38d | 0d | Gestor de BD | 24h | 1,359.6 | 1,359.6 |
| 71 | 3.1.3.5 | **Refinar el Diseño** | 16d | 2017-11-01 | 2017-12-04 |  | 2018-02-12 | 2018-03-15 | 16d | 87.38d |  |  | 88h | 5,170.6 | 5,170.6 |
| 72 | 3.1.3.5.1 | Refinar Diagramas de Clases de Diseño | 1.5d | 2017-11-15 | 2017-11-17 | 63 | 2018-02-26 | 2018-02-28 | 1.5d | 94.88d |  | Ingeniero de Casos de Uso; Analista de Sistemas | 24h | 1,421.4 | 1,421.4 |
| 73 | 3.1.3.5.2 | Refinar Diagramas de Colaboración | 1d | 2017-11-23 | 2017-11-24 | 64 | 2018-03-06 | 2018-03-07 | 1d | 91.38d |  | Ingeniero de Casos de Uso; Analista de Sistemas | 16h | 947.6 | 947.6 |
| 74 | 3.1.3.5.3 | Refinar Diagrama de Despliegue | 0.5d | 2017-11-03 | 2017-11-03 | 65 | 2018-02-13 | 2018-02-14 | 0.5d | 101.88d |  | Ingeniero de Casos de Uso; Analista de Sistemas | 8h | 473.8 | 473.8 |
| 75 | 3.1.3.5.4 | Refinar Diagramas de Estado | 1d | 2017-11-01 | 2017-11-03 | 66 | 2018-02-12 | 2018-02-13 | 1d | 102.38d |  | Ingeniero de Casos de Uso; Analista de Sistemas | 16h | 947.6 | 947.6 |
| 76 | 3.1.3.5.5 | Refinar BD | 2d | 2017-11-29 | 2017-12-04 | 70 | 2018-03-12 | 2018-03-15 | 2d | 87.38d |  | Gestor de BD | 16h | 906.4 | 906.4 |
| 77 | 3.1.3.5.6 | Refinar Paquetes de Diseño | 0.5d | 2017-11-28 | 2017-11-29 | 68 | 2018-03-08 | 2018-03-09 | 0.5d | 89.88d |  | Ingeniero de Componentes; Analista de Sistemas | 8h | 473.8 | 473.8 |

| ID | WBS | Task | Duration | Start | Finish | Predecessors | Baseline start | Baseline finish | Baseline duration | Total slack | Free slack | Resources | Work | Cost | Baseline cost |
| --- | --- | --- | --- | --- | --- | --- | --- | --- | --- | --- | --- | --- | --- | --- | --- |
| 78 | 3.2 | **Iteración 2** | 75.33d | 2017-10-17 | 2018-03-16 | 41 | 2018-01-25 | 2018-06-26 | 75.33d | 3.71d |  |  | 1096h | 58,926.3 | 58,926.3 |
| 79 | 3.2.1 | **Workflow de Requisitos** | 10d | 2017-10-17 | 2017-11-06 |  | 2018-01-25 | 2018-02-15 | 10d | 3.71d | 0d |  | 160h | 7,488.1 | 7,488.1 |
| 80 | 3.2.1.1 | **Analizar el Problema** | 0.5d | 2017-10-17 | 2017-10-18 |  | 2018-01-25 | 2018-01-26 | 0.5d | 13.21d |  |  | 4h | 247.2 | 247.2 |
| 81 | 3.2.1.1.1 | Glorario de Términos | 0.5d | 2017-10-17 | 2017-10-18 |  | 2018-01-25 | 2018-01-26 | 0.5d | 13.21d |  | Analista de Sistemas | 4h | 247.2 | 247.2 |
| 82 | 3.2.1.2 | **Definición del Sistema** | 6d | 2017-10-17 | 2017-10-27 |  | 2018-01-25 | 2018-02-07 | 6d | 3.71d |  |  | 88h | 3,934.6 | 3,934.6 |
| 83 | 3.2.1.2.1 | Detallar Casos de Uso | 5d | 2017-10-17 | 2017-10-26 |  | 2018-01-25 | 2018-02-06 | 5d | 3.71d | 0d | Especificador de Casos de Uso [50%]; Implementador [50%] | 40h | 1,957 | 1,957 |
| 84 | 3.2.1.2.2 | Prototipar Casos de Uso | 6d | 2017-10-17 | 2017-10-27 |  | 2018-01-25 | 2018-02-07 | 6d | 7.71d |  | Diseñador de Interfaz de Usuario | 48h | 1,977.6 | 1,977.6 |
| 85 | 3.2.1.3 | **Definición de Alcance** | 0.5d | 2017-10-17 | 2017-10-18 |  | 2018-01-25 | 2018-01-26 | 0.5d | 13.21d |  |  | 4h | 226.6 | 226.6 |
| 86 | 3.2.1.3.1 | Priorizar Casos de Uso | 0.5d | 2017-10-17 | 2017-10-18 |  | 2018-01-25 | 2018-01-26 | 0.5d | 13.21d |  | Arquitecto | 4h | 226.6 | 226.6 |
| 87 | 3.2.1.4 | **Refinar la Definición del Sistema** | 10d | 2017-10-17 | 2017-11-06 |  | 2018-01-25 | 2018-02-15 | 10d | 3.71d |  |  | 60h | 2,832.5 | 2,832.5 |
| 88 | 3.2.1.4.1 | Refinar Casos de Uso | 5d | 2017-10-26 | 2017-11-06 | 83 | 2018-02-06 | 2018-02-15 | 5d | 3.71d |  | Especificador de Casos de Uso | 40h | 1,854 | 1,854 |
| 89 | 3.2.1.4.2 | Refinar Modelo de Caso de Uso | 7.33d | 2017-10-17 | 2017-11-01 |  | 2018-01-25 | 2018-02-09 | 7.33d | 5.88d | 0d | Especificador de Casos de Uso [50%]; Implementador [50%] | 20h | 978.5 | 978.5 |
| 90 | 3.2.1.5 | Administración de Cambios de Requisitos | 0.5d | 2017-11-01 | 2017-11-01 | 89 | 2018-02-09 | 2018-02-09 | 0.5d | 5.88d |  | Analista de Sistemas | 4h | 247.2 | 247.2 |
| 91 | 3.2.2 | **Workflow de Análisis** | 22.33d | 2017-11-06 | 2017-12-20 | 79 | 2018-02-15 | 2018-03-30 | 22.33d | 3.71d | 0d |  | 240h | 12,895.6 | 12,895.6 |
| 92 | 3.2.2.1 | **Análisis del Comportamiento** | 22.33d | 2017-11-06 | 2017-12-20 |  | 2018-02-15 | 2018-03-30 | 22.33d | 3.71d |  |  | 240h | 12,895.6 | 12,895.6 |
| 93 | 3.2.2.1.1 | **Análisis de la Arquitectura** | 7d | 2017-11-06 | 2017-11-20 |  | 2018-02-15 | 2018-03-01 | 7d | 3.71d |  |  | 56h | 3,172.4 | 3,172.4 |
| 94 | 3.2.2.1.1.1 | Identifica Clases de Análisis | 5d | 2017-11-06 | 2017-11-15 |  | 2018-02-15 | 2018-02-26 | 5d | 3.71d | 0d | Arquitecto | 40h | 2,266 | 2,266 |
| 95 | 3.2.2.1.1.2 | Identificar Paquetes de Análisis | 2d | 2017-11-15 | 2017-11-20 | 94 | 2018-02-26 | 2018-03-01 | 2d | 19.04d |  | Arquitecto | 16h | 906.4 | 906.4 |
| 96 | 3.2.2.1.2 | **Análisis de Casos de Uso** | 13.33d | 2017-11-14 | 2017-12-11 |  | 2018-02-22 | 2018-03-21 | 13.33d | 3.71d |  |  | 112h | 5,768 | 5,768 |
| 97 | 3.2.2.1.2.1 | Diagramas de Clases de Análisis | 10d | 2017-11-14 | 2017-12-04 | 94FS-1d | 2018-02-22 | 2018-03-15 | 10d | 7.04d | 0d | Ingeniero de Casos de Uso | 48h | 2,472 | 2,472 |
| 98 | 3.2.2.1.2.2 | Diagramas de Colaboración | 13.33d | 2017-11-14 | 2017-12-11 | 94FS-1d | 2018-02-22 | 2018-03-21 | 13.33d | 3.71d | 0d | Ingeniero de Casos de Uso | 64h | 3,296 | 3,296 |
| 99 | 3.2.2.1.3 | **Análisis de Paquetes** | 1d | 2017-12-11 | 2017-12-13 |  | 2018-03-21 | 2018-03-23 | 1d | 5.71d |  |  | 8h | 453.2 | 453.2 |
| 100 | 3.2.2.1.3.1 | Paquetes de Análisis | 1d | 2017-12-11 | 2017-12-13 | 97, 98 | 2018-03-21 | 2018-03-23 | 1d | 5.71d | 0d | Ingeniero de Componentes | 8h | 453.2 | 453.2 |
| 101 | 3.2.2.1.4 | **Análisis de Datos** | 3d | 2017-12-11 | 2017-12-15 |  | 2018-03-21 | 2018-03-28 | 3d | 3.71d |  |  | 24h | 1,359.6 | 1,359.6 |
| 102 | 3.2.2.1.4.1 | Análisis de la BD | 3d | 2017-12-11 | 2017-12-15 | 97, 98 | 2018-03-21 | 2018-03-28 | 3d | 3.71d | 0d | Gestor de BD | 24h | 1,359.6 | 1,359.6 |

| ID | WBS | Task | Duration | Start | Finish | Predecessors | Baseline start | Baseline finish | Baseline duration | Total slack | Free slack | Resources | Work | Cost | Baseline cost |
| --- | --- | --- | --- | --- | --- | --- | --- | --- | --- | --- | --- | --- | --- | --- | --- |
| 103 | 3.2.2.1.5 | **Refinar el Análisis** | 7.33d | 2017-12-06 | 2017-12-20 |  | 2018-03-16 | 2018-03-30 | 7.33d | 3.71d |  |  | 40h | 2,142.4 | 2,142.4 |
| 104 | 3.2.2.1.5.1 | Refinar Diagramas de Clases de Análisis | 1.67d | 2017-12-06 | 2017-12-08 | 97FS+1d | 2018-03-16 | 2018-03-20 | 1.67d | 9.38d | 5.67d | Ingeniero de Casos de Uso | 8h | 412 | 412 |
| 105 | 3.2.2.1.5.2 | Refinar Diagramas de Colaboración | 3.33d | 2017-12-13 | 2017-12-19 | 98FS+1d | 2018-03-23 | 2018-03-29 | 3.33d | 4.38d | 0.67d | Ingeniero de Casos de Uso | 16h | 824 | 824 |
| 106 | 3.2.2.1.5.3 | Refinar BD | 1d | 2017-12-19 | 2017-12-20 | 102FS+1d | 2018-03-29 | 2018-03-30 | 1d | 3.71d |  | Gestor de BD | 8h | 453.2 | 453.2 |
| 107 | 3.2.2.1.5.4 | Refinar Paquetes de Análisis | 1d | 2017-12-14 | 2017-12-15 | 100FS+1d | 2018-03-26 | 2018-03-28 | 1d | 5.71d |  | Ingeniero de Componentes | 8h | 453.2 | 453.2 |
| 108 | 3.2.3 | **Workflow de Diseño** | 24d | 2017-12-20 | 2018-02-07 | 91 | 2018-03-30 | 2018-05-18 | 24d | 36.04d | 0d |  | 416h | 24,122.6 | 24,122.6 |
| 109 | 3.2.3.1 | **Diseño de la Arquitectura** | 6d | 2017-12-20 | 2018-01-02 |  | 2018-03-30 | 2018-04-12 | 6d | 36.04d |  |  | 72h | 4,449.6 | 4,449.6 |
| 110 | 3.2.3.1.1 | Identifica Clases de Diseño | 6d | 2017-12-20 | 2018-01-02 | 104, 105 | 2018-03-30 | 2018-04-12 | 6d | 36.04d | 0d | Arquitecto | 48h | 2,966.4 | 2,966.4 |
| 111 | 3.2.3.1.2 | Identificar Paquetes de Diseño | 3d | 2017-12-20 | 2017-12-27 | 104, 105 | 2018-03-30 | 2018-04-06 | 3d | 57.04d |  | Arquitecto | 24h | 1,483.2 | 1,483.2 |
| 112 | 3.2.3.2 | **Diseño de Casos de Uso** | 13d | 2018-01-02 | 2018-01-26 |  | 2018-04-12 | 2018-05-09 | 13d | 36.04d |  |  | 216h | 12,236.4 | 12,236.4 |
| 113 | 3.2.3.2.1 | Diagramas de Clases de Diseño | 9d | 2018-01-02 | 2018-01-19 | 110 | 2018-04-12 | 2018-05-01 | 9d | 40.04d | 0d | Ingeniero de Casos de Uso [50%]; Analista de Sistemas [50%] | 72h | 4,078.8 | 4,078.8 |
| 114 | 3.2.3.2.2 | Diagramas de Colaboración | 13d | 2018-01-02 | 2018-01-26 | 110 | 2018-04-12 | 2018-05-09 | 13d | 36.04d | 0d | Ingeniero de Casos de Uso [50%]; Analista de Sistemas [50%] | 104h | 5,891.6 | 5,891.6 |
| 115 | 3.2.3.2.3 | Diagrama de Despliegue | 3d | 2018-01-02 | 2018-01-08 | 110 | 2018-04-12 | 2018-04-18 | 3d | 50.54d | 0d | Ingeniero de Casos de Uso [50%]; Analista de Sistemas [50%] | 24h | 1,359.6 | 1,359.6 |
| 116 | 3.2.3.2.4 | Diagramas de Estado | 2d | 2018-01-02 | 2018-01-05 | 110 | 2018-04-12 | 2018-04-17 | 2d | 51.04d | 0d | Ingeniero de Casos de Uso [50%]; Analista de Sistemas [50%] | 16h | 906.4 | 906.4 |
| 117 | 3.2.3.3 | **Diseño de Paquetes** | 2d | 2018-01-26 | 2018-01-31 |  | 2018-05-09 | 2018-05-11 | 2d | 38.54d |  |  | 16h | 906.4 | 906.4 |
| 118 | 3.2.3.3.1 | Paquetes de Diseño | 2d | 2018-01-26 | 2018-01-31 | 113, 114 | 2018-05-09 | 2018-05-11 | 2d | 38.54d | 0d | Ingeniero de Componentes | 16h | 906.4 | 906.4 |
| 119 | 3.2.3.4 | **Diseño de Datos** | 3d | 2018-01-26 | 2018-02-02 |  | 2018-05-09 | 2018-05-15 | 3d | 36.04d |  |  | 24h | 1,359.6 | 1,359.6 |
| 120 | 3.2.3.4.1 | Diseño de la BD | 3d | 2018-01-26 | 2018-02-02 | 113, 114 | 2018-05-09 | 2018-05-15 | 3d | 36.04d | 0d | Gestor de BD | 24h | 1,359.6 | 1,359.6 |
| 121 | 3.2.3.5 | **Refinar el Diseño** | 16d | 2018-01-05 | 2018-02-07 |  | 2018-04-17 | 2018-05-18 | 16d | 36.04d |  |  | 88h | 5,170.6 | 5,170.6 |
| 122 | 3.2.3.5.1 | Refinar Diagramas de Clases de Diseño | 1.5d | 2018-01-19 | 2018-01-23 | 113 | 2018-05-01 | 2018-05-03 | 1.5d | 43.54d |  | Ingeniero de Casos de Uso; Analista de Sistemas | 24h | 1,421.4 | 1,421.4 |
| 123 | 3.2.3.5.2 | Refinar Diagramas de Colaboración | 1d | 2018-01-26 | 2018-01-30 | 114 | 2018-05-09 | 2018-05-10 | 1d | 40.04d |  | Ingeniero de Casos de Uso; Analista de Sistemas | 16h | 947.6 | 947.6 |
| 124 | 3.2.3.5.3 | Refinar Diagrama de Despliegue | 0.5d | 2018-01-08 | 2018-01-09 | 115 | 2018-04-18 | 2018-04-19 | 0.5d | 50.54d |  | Ingeniero de Casos de Uso; Analista de Sistemas | 8h | 473.8 | 473.8 |
| 125 | 3.2.3.5.4 | Refinar Diagramas de Estado | 1d | 2018-01-05 | 2018-01-08 | 116 | 2018-04-17 | 2018-04-18 | 1d | 51.04d |  | Ingeniero de Casos de Uso; Analista de Sistemas | 16h | 947.6 | 947.6 |
| 126 | 3.2.3.5.5 | Refinar BD | 2d | 2018-02-02 | 2018-02-07 | 120 | 2018-05-15 | 2018-05-18 | 2d | 36.04d |  | Gestor de BD | 16h | 906.4 | 906.4 |
| 127 | 3.2.3.5.6 | Refinar Paquetes de Diseño | 0.5d | 2018-01-31 | 2018-02-01 | 118 | 2018-05-11 | 2018-05-14 | 0.5d | 38.54d |  | Ingeniero de Componentes; Analista de Sistemas | 8h | 473.8 | 473.8 |

| ID | WBS | Task | Duration | Start | Finish | Predecessors | Baseline start | Baseline finish | Baseline duration | Total slack | Free slack | Resources | Work | Cost | Baseline cost |
| --- | --- | --- | --- | --- | --- | --- | --- | --- | --- | --- | --- | --- | --- | --- | --- |
| 128 | 3.2.4 | **Workflow de Implementación y Pruebas** | 19d | 2018-02-07 | 2018-03-16 | 108 | 2018-05-18 | 2018-06-26 | 19d | 36.04d | 0d |  | 280h | 14,420 | 14,420 |
| 129 | 3.2.4.1 | Desarrollo de estructura de aplicación | 15d | 2018-02-13 | 2018-03-14 | 130 | 2018-05-24 | 2018-06-22 | 15d | 36.04d | 0d | Implementador [200%] | 240h | 12,360 | 12,360 |
| 130 | 3.2.4.2 | Planeación de la integración de Sistemas | 2d | 2018-02-08 | 2018-02-13 | 131 | 2018-05-21 | 2018-05-24 | 2d | 36.04d | 0d | Implementador | 16h | 824 | 824 |
| 131 | 3.2.4.3 | Plan de Pruebas | 1d | 2018-02-07 | 2018-02-08 |  | 2018-05-18 | 2018-05-21 | 1d | 36.04d | 0d | Implementador | 8h | 412 | 412 |
| 132 | 3.2.4.4 | Integración de Sistemas | 1d | 2018-03-14 | 2018-03-16 | 129 | 2018-06-22 | 2018-06-26 | 1d | 36.04d |  | Implementador | 8h | 412 | 412 |
| 133 | 3.2.4.5 | Ejecución de Pruebas | 1d | 2018-03-14 | 2018-03-16 | 129 | 2018-06-22 | 2018-06-26 | 1d | 36.04d |  | Implementador | 8h | 412 | 412 |
| 134 | 3.3 | **Iteración 3** | 75.33d | 2017-12-20 | 2018-05-21 | 91 | 2018-03-30 | 2018-08-29 | 75.33d | 3.71d |  |  | 1096h | 58,926.3 | 58,926.3 |
| 135 | 3.3.1 | **Workflow de Requisitos** | 10d | 2017-12-20 | 2018-01-10 |  | 2018-03-30 | 2018-04-20 | 10d | 3.71d | 0d |  | 160h | 7,488.1 | 7,488.1 |
| 136 | 3.3.1.1 | **Analizar el Problema** | 0.5d | 2017-12-20 | 2017-12-21 |  | 2018-03-30 | 2018-04-02 | 0.5d | 13.21d |  |  | 4h | 247.2 | 247.2 |
| 137 | 3.3.1.1.1 | Glorario de Términos | 0.5d | 2017-12-20 | 2017-12-21 |  | 2018-03-30 | 2018-04-02 | 0.5d | 13.21d |  | Analista de Sistemas | 4h | 247.2 | 247.2 |
| 138 | 3.3.1.2 | **Definición del Sistema** | 6d | 2017-12-20 | 2018-01-02 |  | 2018-03-30 | 2018-04-12 | 6d | 3.71d |  |  | 88h | 3,934.6 | 3,934.6 |
| 139 | 3.3.1.2.1 | Detallar Casos de Uso | 5d | 2017-12-20 | 2017-12-29 |  | 2018-03-30 | 2018-04-11 | 5d | 3.71d | 0d | Especificador de Casos de Uso [50%]; Implementador [50%] | 40h | 1,957 | 1,957 |
| 140 | 3.3.1.2.2 | Prototipar Casos de Uso | 6d | 2017-12-20 | 2018-01-02 |  | 2018-03-30 | 2018-04-12 | 6d | 7.71d |  | Diseñador de Interfaz de Usuario | 48h | 1,977.6 | 1,977.6 |
| 141 | 3.3.1.3 | **Definición de Alcance** | 0.5d | 2017-12-20 | 2017-12-21 |  | 2018-03-30 | 2018-04-02 | 0.5d | 13.21d |  |  | 4h | 226.6 | 226.6 |
| 142 | 3.3.1.3.1 | Priorizar Casos de Uso | 0.5d | 2017-12-20 | 2017-12-21 |  | 2018-03-30 | 2018-04-02 | 0.5d | 13.21d |  | Arquitecto | 4h | 226.6 | 226.6 |
| 143 | 3.3.1.4 | **Refinar la Definición del Sistema** | 10d | 2017-12-20 | 2018-01-10 |  | 2018-03-30 | 2018-04-20 | 10d | 3.71d |  |  | 60h | 2,832.5 | 2,832.5 |
| 144 | 3.3.1.4.1 | Refinar Casos de Uso | 5d | 2017-12-29 | 2018-01-10 | 139 | 2018-04-11 | 2018-04-20 | 5d | 3.71d |  | Especificador de Casos de Uso | 40h | 1,854 | 1,854 |
| 145 | 3.3.1.4.2 | Refinar Modelo de Caso de Uso | 7d | 2017-12-20 | 2018-01-03 |  | 2018-03-30 | 2018-04-13 | 7d | 6.21d | 0d | Especificador de Casos de Uso [50%]; Implementador [50%] | 20h | 978.5 | 978.5 |
| 146 | 3.3.1.5 | Administración de Cambios de Requisitos | 0.5d | 2018-01-03 | 2018-01-04 | 145 | 2018-04-13 | 2018-04-16 | 0.5d | 6.21d |  | Analista de Sistemas | 4h | 247.2 | 247.2 |
| 147 | 3.3.2 | **Workflow de Análisis** | 22.33d | 2018-01-10 | 2018-02-22 | 135 | 2018-04-20 | 2018-06-05 | 22.33d | 3.71d | 0d |  | 240h | 12,895.6 | 12,895.6 |
| 148 | 3.3.2.1 | **Análisis del Comportamiento** | 22.33d | 2018-01-10 | 2018-02-22 |  | 2018-04-20 | 2018-06-05 | 22.33d | 3.71d |  |  | 240h | 12,895.6 | 12,895.6 |
| 149 | 3.3.2.1.1 | **Análisis de la Arquitectura** | 7d | 2018-01-10 | 2018-01-24 |  | 2018-04-20 | 2018-05-04 | 7d | 3.71d |  |  | 56h | 3,172.4 | 3,172.4 |
| 150 | 3.3.2.1.1.1 | Identifica Clases de Análisis | 5d | 2018-01-10 | 2018-01-19 |  | 2018-04-20 | 2018-05-01 | 5d | 3.71d | 0d | Arquitecto | 40h | 2,266 | 2,266 |
| 151 | 3.3.2.1.1.2 | Identificar Paquetes de Análisis | 2d | 2018-01-19 | 2018-01-24 | 150 | 2018-05-01 | 2018-05-04 | 2d | 19.04d |  | Arquitecto | 16h | 906.4 | 906.4 |

| ID | WBS | Task | Duration | Start | Finish | Predecessors | Baseline start | Baseline finish | Baseline duration | Total slack | Free slack | Resources | Work | Cost | Baseline cost |
| --- | --- | --- | --- | --- | --- | --- | --- | --- | --- | --- | --- | --- | --- | --- | --- |
| 152 | 3.3.2.1.2 | **Análisis de Casos de Uso** | 13.33d | 2018-01-17 | 2018-02-13 |  | 2018-04-27 | 2018-05-24 | 13.33d | 3.71d |  |  | 112h | 5,768 | 5,768 |
| 153 | 3.3.2.1.2.1 | Diagramas de Clases de Análisis | 10d | 2018-01-17 | 2018-02-07 | 150FS-1d | 2018-04-27 | 2018-05-18 | 10d | 7.04d | 0d | Ingeniero de Casos de Uso | 48h | 2,472 | 2,472 |
| 154 | 3.3.2.1.2.2 | Diagramas de Colaboración | 13.33d | 2018-01-17 | 2018-02-13 | 150FS-1d | 2018-04-27 | 2018-05-24 | 13.33d | 3.71d | 0d | Ingeniero de Casos de Uso | 64h | 3,296 | 3,296 |
| 155 | 3.3.2.1.3 | **Análisis de Paquetes** | 1d | 2018-02-13 | 2018-02-15 |  | 2018-05-25 | 2018-05-28 | 1d | 5.71d |  |  | 8h | 453.2 | 453.2 |
| 156 | 3.3.2.1.3.1 | Paquetes de Análisis | 1d | 2018-02-13 | 2018-02-15 | 153, 154 | 2018-05-25 | 2018-05-28 | 1d | 5.71d | 0d | Ingeniero de Componentes | 8h | 453.2 | 453.2 |
| 157 | 3.3.2.1.4 | **Análisis de Datos** | 3d | 2018-02-13 | 2018-02-20 |  | 2018-05-25 | 2018-05-31 | 3d | 3.71d |  |  | 24h | 1,359.6 | 1,359.6 |
| 158 | 3.3.2.1.4.1 | Análisis de la BD | 3d | 2018-02-13 | 2018-02-20 | 153, 154 | 2018-05-25 | 2018-05-31 | 3d | 3.71d | 0d | Gestor de BD | 24h | 1,359.6 | 1,359.6 |
| 159 | 3.3.2.1.5 | **Refinar el Análisis** | 7.33d | 2018-02-08 | 2018-02-22 |  | 2018-05-21 | 2018-06-05 | 7.33d | 3.71d |  |  | 40h | 2,142.4 | 2,142.4 |
| 160 | 3.3.2.1.5.1 | Refinar Diagramas de Clases de Análisis | 1.67d | 2018-02-08 | 2018-02-12 | 153FS+1d | 2018-05-21 | 2018-05-24 | 1.67d | 9.38d | 5.67d | Ingeniero de Casos de Uso | 8h | 412 | 412 |
| 161 | 3.3.2.1.5.2 | Refinar Diagramas de Colaboración | 3.33d | 2018-02-15 | 2018-02-21 | 154FS+1d | 2018-05-28 | 2018-06-04 | 3.33d | 4.38d | 0.67d | Ingeniero de Casos de Uso | 16h | 824 | 824 |
| 162 | 3.3.2.1.5.3 | Refinar BD | 1d | 2018-02-21 | 2018-02-22 | 158FS+1d | 2018-06-01 | 2018-06-05 | 1d | 3.71d |  | Gestor de BD | 8h | 453.2 | 453.2 |
| 163 | 3.3.2.1.5.4 | Refinar Paquetes de Análisis | 1d | 2018-02-16 | 2018-02-20 | 156FS+1d | 2018-05-30 | 2018-05-31 | 1d | 5.71d |  | Ingeniero de Componentes | 8h | 453.2 | 453.2 |
| 164 | 3.3.3 | **Workflow de Diseño** | 24d | 2018-02-22 | 2018-04-12 | 147 | 2018-06-05 | 2018-07-23 | 24d | 3.71d | 0d |  | 416h | 24,122.6 | 24,122.6 |
| 165 | 3.3.3.1 | **Diseño de la Arquitectura** | 6d | 2018-02-22 | 2018-03-07 |  | 2018-06-05 | 2018-06-15 | 6d | 3.71d |  |  | 72h | 4,449.6 | 4,449.6 |
| 166 | 3.3.3.1.1 | Identifica Clases de Diseño | 6d | 2018-02-22 | 2018-03-07 | 160, 161 | 2018-06-05 | 2018-06-15 | 6d | 3.71d | 0d | Arquitecto | 48h | 2,966.4 | 2,966.4 |
| 167 | 3.3.3.1.2 | Identificar Paquetes de Diseño | 3d | 2018-02-22 | 2018-03-01 | 160, 161 | 2018-06-05 | 2018-06-11 | 3d | 24.71d |  | Arquitecto | 24h | 1,483.2 | 1,483.2 |
| 168 | 3.3.3.2 | **Diseño de Casos de Uso** | 13d | 2018-03-07 | 2018-04-03 |  | 2018-06-15 | 2018-07-12 | 13d | 3.71d |  |  | 216h | 12,236.4 | 12,236.4 |
| 169 | 3.3.3.2.1 | Diagramas de Clases de Diseño | 9d | 2018-03-07 | 2018-03-26 | 166 | 2018-06-15 | 2018-07-04 | 9d | 7.71d | 0d | Ingeniero de Casos de Uso [50%]; Analista de Sistemas [50%] | 72h | 4,078.8 | 4,078.8 |
| 170 | 3.3.3.2.2 | Diagramas de Colaboración | 13d | 2018-03-07 | 2018-04-03 | 166 | 2018-06-15 | 2018-07-12 | 13d | 3.71d | 0d | Ingeniero de Casos de Uso [50%]; Analista de Sistemas [50%] | 104h | 5,891.6 | 5,891.6 |
| 171 | 3.3.3.2.3 | Diagrama de Despliegue | 3d | 2018-03-07 | 2018-03-13 | 166 | 2018-06-15 | 2018-06-21 | 3d | 18.21d | 0d | Ingeniero de Casos de Uso [50%]; Analista de Sistemas [50%] | 24h | 1,359.6 | 1,359.6 |
| 172 | 3.3.3.2.4 | Diagramas de Estado | 2d | 2018-03-07 | 2018-03-12 | 166 | 2018-06-15 | 2018-06-20 | 2d | 18.71d | 0d | Ingeniero de Casos de Uso [50%]; Analista de Sistemas [50%] | 16h | 906.4 | 906.4 |
| 173 | 3.3.3.3 | **Diseño de Paquetes** | 2d | 2018-04-03 | 2018-04-05 |  | 2018-07-12 | 2018-07-17 | 2d | 6.21d |  |  | 16h | 906.4 | 906.4 |
| 174 | 3.3.3.3.1 | Paquetes de Diseño | 2d | 2018-04-03 | 2018-04-05 | 169, 170 | 2018-07-12 | 2018-07-17 | 2d | 6.21d | 0d | Ingeniero de Componentes | 16h | 906.4 | 906.4 |
| 175 | 3.3.3.4 | **Diseño de Datos** | 3d | 2018-04-03 | 2018-04-09 |  | 2018-07-12 | 2018-07-18 | 3d | 3.71d |  |  | 24h | 1,359.6 | 1,359.6 |
| 176 | 3.3.3.4.1 | Diseño de la BD | 3d | 2018-04-03 | 2018-04-09 | 169, 170 | 2018-07-12 | 2018-07-18 | 3d | 3.71d | 0d | Gestor de BD | 24h | 1,359.6 | 1,359.6 |

| ID | WBS | Task | Duration | Start | Finish | Predecessors | Baseline start | Baseline finish | Baseline duration | Total slack | Free slack | Resources | Work | Cost | Baseline cost |
| --- | --- | --- | --- | --- | --- | --- | --- | --- | --- | --- | --- | --- | --- | --- | --- |
| 177 | 3.3.3.5 | **Refinar el Diseño** | 16d | 2018-03-12 | 2018-04-12 |  | 2018-06-20 | 2018-07-23 | 16d | 3.71d |  |  | 88h | 5,170.6 | 5,170.6 |
| 178 | 3.3.3.5.1 | Refinar Diagramas de Clases de Diseño | 1.5d | 2018-03-26 | 2018-03-28 | 169 | 2018-07-04 | 2018-07-06 | 1.5d | 11.21d |  | Ingeniero de Casos de Uso; Analista de Sistemas | 24h | 1,421.4 | 1,421.4 |
| 179 | 3.3.3.5.2 | Refinar Diagramas de Colaboración | 1d | 2018-04-03 | 2018-04-04 | 170 | 2018-07-12 | 2018-07-13 | 1d | 7.71d |  | Ingeniero de Casos de Uso; Analista de Sistemas | 16h | 947.6 | 947.6 |
| 180 | 3.3.3.5.3 | Refinar Diagrama de Despliegue | 0.5d | 2018-03-13 | 2018-03-14 | 171 | 2018-06-22 | 2018-06-22 | 0.5d | 18.21d |  | Ingeniero de Casos de Uso; Analista de Sistemas | 8h | 473.8 | 473.8 |
| 181 | 3.3.3.5.4 | Refinar Diagramas de Estado | 1d | 2018-03-12 | 2018-03-13 | 172 | 2018-06-20 | 2018-06-21 | 1d | 18.71d |  | Ingeniero de Casos de Uso; Analista de Sistemas | 16h | 947.6 | 947.6 |
| 182 | 3.3.3.5.5 | Refinar BD | 2d | 2018-04-09 | 2018-04-12 | 176 | 2018-07-18 | 2018-07-23 | 2d | 3.71d |  | Gestor de BD | 16h | 906.4 | 906.4 |
| 183 | 3.3.3.5.6 | Refinar Paquetes de Diseño | 0.5d | 2018-04-05 | 2018-04-06 | 174 | 2018-07-17 | 2018-07-17 | 0.5d | 6.21d |  | Ingeniero de Componentes; Analista de Sistemas | 8h | 473.8 | 473.8 |
| 184 | 3.3.4 | **Workflow de Implementación y Pruebas** | 19d | 2018-04-12 | 2018-05-21 | 164 | 2018-07-23 | 2018-08-29 | 19d | 3.71d | 0d |  | 280h | 14,420 | 14,420 |
| 185 | 3.3.4.1 | Desarrollo de estructura de aplicación | 15d | 2018-04-18 | 2018-05-17 | 186 | 2018-07-27 | 2018-08-28 | 15d | 3.71d | 0d | Implementador [200%] | 240h | 12,360 | 12,360 |
| 186 | 3.3.4.2 | Planeación de la integración de Sistemas | 2d | 2018-04-13 | 2018-04-18 | 187 | 2018-07-25 | 2018-07-27 | 2d | 3.71d | 0d | Implementador | 16h | 824 | 824 |
| 187 | 3.3.4.3 | Plan de Pruebas | 1d | 2018-04-12 | 2018-04-13 |  | 2018-07-23 | 2018-07-24 | 1d | 3.71d | 0d | Implementador | 8h | 412 | 412 |
| 188 | 3.3.4.4 | Integración de Sistemas | 1d | 2018-05-17 | 2018-05-21 | 185 | 2018-08-28 | 2018-08-29 | 1d | 3.71d |  | Implementador | 8h | 412 | 412 |
| 189 | 3.3.4.5 | Ejecución de Pruebas | 1d | 2018-05-17 | 2018-05-21 | 185 | 2018-08-28 | 2018-08-29 | 1d | 3.71d |  | Implementador | 8h | 412 | 412 |
| 190 | 4 | **Fase de Construcción** | 97.67d | 2018-05-21 | 2018-11-30 | 27 | 2018-08-29 | 2019-03-13 | 97.67d | 3.71d |  |  | 2032h | 110,364.5 | 110,364.5 |
| 191 | 4.1 | **Iteración 4** | 75.33d | 2018-05-21 | 2018-10-17 | 147 | 2018-08-29 | 2019-01-28 | 75.33d | 3.71d |  |  | 1096h | 58,926.3 | 58,926.3 |
| 192 | 4.1.1 | **Workflow de Requisitos** | 10d | 2018-05-21 | 2018-06-08 |  | 2018-08-29 | 2018-09-18 | 10d | 3.71d | 0d |  | 160h | 7,488.1 | 7,488.1 |
| 193 | 4.1.1.1 | **Analizar el Problema** | 0.5d | 2018-05-21 | 2018-05-22 |  | 2018-08-29 | 2018-08-30 | 0.5d | 13.21d |  |  | 4h | 247.2 | 247.2 |
| 194 | 4.1.1.1.1 | Glorario de Términos | 0.5d | 2018-05-21 | 2018-05-22 |  | 2018-08-29 | 2018-08-30 | 0.5d | 13.21d |  | Analista de Sistemas | 4h | 247.2 | 247.2 |
| 195 | 4.1.1.2 | **Definición del Sistema** | 6d | 2018-05-21 | 2018-05-31 |  | 2018-08-29 | 2018-09-11 | 6d | 3.71d |  |  | 88h | 3,934.6 | 3,934.6 |
| 196 | 4.1.1.2.1 | Detallar Casos de Uso | 5d | 2018-05-21 | 2018-05-30 |  | 2018-08-29 | 2018-09-07 | 5d | 3.71d | 0d | Especificador de Casos de Uso [50%]; Implementador [50%] | 40h | 1,957 | 1,957 |
| 197 | 4.1.1.2.2 | Prototipar Casos de Uso | 6d | 2018-05-21 | 2018-05-31 |  | 2018-08-29 | 2018-09-11 | 6d | 7.71d |  | Diseñador de Interfaz de Usuario | 48h | 1,977.6 | 1,977.6 |
| 198 | 4.1.1.3 | **Definición de Alcance** | 0.5d | 2018-05-21 | 2018-05-22 |  | 2018-08-29 | 2018-08-30 | 0.5d | 13.21d |  |  | 4h | 226.6 | 226.6 |
| 199 | 4.1.1.3.1 | Priorizar Casos de Uso | 0.5d | 2018-05-21 | 2018-05-22 |  | 2018-08-29 | 2018-08-30 | 0.5d | 13.21d |  | Arquitecto | 4h | 226.6 | 226.6 |
| 200 | 4.1.1.4 | **Refinar la Definición del Sistema** | 10d | 2018-05-21 | 2018-06-08 |  | 2018-08-29 | 2018-09-18 | 10d | 3.71d |  |  | 60h | 2,832.5 | 2,832.5 |
| 201 | 4.1.1.4.1 | Refinar Casos de Uso | 5d | 2018-05-30 | 2018-06-08 | 196 | 2018-09-07 | 2018-09-18 | 5d | 3.71d |  | Especificador de Casos de Uso | 40h | 1,854 | 1,854 |
| 202 | 4.1.1.4.2 | Refinar Modelo de Caso de Uso | 7.08d | 2018-05-21 | 2018-06-04 |  | 2018-08-29 | 2018-09-12 | 7.08d | 6.12d | 0d | Especificador de Casos de Uso [50%]; Implementador [50%] | 20h | 978.5 | 978.5 |
| 203 | 4.1.1.5 | Administración de Cambios de Requisitos | 0.5d | 2018-06-04 | 2018-06-05 | 202 | 2018-09-12 | 2018-09-13 | 0.5d | 6.12d |  | Analista de Sistemas | 4h | 247.2 | 247.2 |

| ID | WBS | Task | Duration | Start | Finish | Predecessors | Baseline start | Baseline finish | Baseline duration | Total slack | Free slack | Resources | Work | Cost | Baseline cost |
| --- | --- | --- | --- | --- | --- | --- | --- | --- | --- | --- | --- | --- | --- | --- | --- |
| 204 | 4.1.2 | **Workflow de Análisis** | 22.33d | 2018-06-08 | 2018-07-24 | 192 | 2018-09-19 | 2018-11-01 | 22.33d | 3.71d | 0d |  | 240h | 12,895.6 | 12,895.6 |
| 205 | 4.1.2.1 | **Análisis del Comportamiento** | 22.33d | 2018-06-08 | 2018-07-24 |  | 2018-09-19 | 2018-11-01 | 22.33d | 3.71d |  |  | 240h | 12,895.6 | 12,895.6 |
| 206 | 4.1.2.1.1 | **Análisis de la Arquitectura** | 7d | 2018-06-08 | 2018-06-22 |  | 2018-09-19 | 2018-10-02 | 7d | 3.71d |  |  | 56h | 3,172.4 | 3,172.4 |
| 207 | 4.1.2.1.1.1 | Identifica Clases de Análisis | 5d | 2018-06-08 | 2018-06-19 |  | 2018-09-19 | 2018-09-27 | 5d | 3.71d | 0d | Arquitecto | 40h | 2,266 | 2,266 |
| 208 | 4.1.2.1.1.2 | Identificar Paquetes de Análisis | 2d | 2018-06-19 | 2018-06-22 | 207 | 2018-09-28 | 2018-10-02 | 2d | 19.04d |  | Arquitecto | 16h | 906.4 | 906.4 |
| 209 | 4.1.2.1.2 | **Análisis de Casos de Uso** | 13.33d | 2018-06-18 | 2018-07-13 |  | 2018-09-26 | 2018-10-23 | 13.33d | 3.71d |  |  | 112h | 5,768 | 5,768 |
| 210 | 4.1.2.1.2.1 | Diagramas de Clases de Análisis | 10d | 2018-06-18 | 2018-07-06 | 207FS-1d | 2018-09-26 | 2018-10-16 | 10d | 7.04d | 0d | Ingeniero de Casos de Uso | 48h | 2,472 | 2,472 |
| 211 | 4.1.2.1.2.2 | Diagramas de Colaboración | 13.33d | 2018-06-18 | 2018-07-13 | 207FS-1d | 2018-09-26 | 2018-10-23 | 13.33d | 3.71d | 0d | Ingeniero de Casos de Uso | 64h | 3,296 | 3,296 |
| 212 | 4.1.2.1.3 | **Análisis de Paquetes** | 1d | 2018-07-13 | 2018-07-16 |  | 2018-10-23 | 2018-10-25 | 1d | 5.71d |  |  | 8h | 453.2 | 453.2 |
| 213 | 4.1.2.1.3.1 | Paquetes de Análisis | 1d | 2018-07-13 | 2018-07-16 | 210, 211 | 2018-10-23 | 2018-10-25 | 1d | 5.71d | 0d | Ingeniero de Componentes | 8h | 453.2 | 453.2 |
| 214 | 4.1.2.1.4 | **Análisis de Datos** | 3d | 2018-07-13 | 2018-07-19 |  | 2018-10-23 | 2018-10-30 | 3d | 3.71d |  |  | 24h | 1,359.6 | 1,359.6 |
| 215 | 4.1.2.1.4.1 | Análisis de la BD | 3d | 2018-07-13 | 2018-07-19 | 210, 211 | 2018-10-23 | 2018-10-30 | 3d | 3.71d | 0d | Gestor de BD | 24h | 1,359.6 | 1,359.6 |
| 216 | 4.1.2.1.5 | **Refinar el Análisis** | 7.33d | 2018-07-10 | 2018-07-24 |  | 2018-10-18 | 2018-11-01 | 7.33d | 3.71d |  |  | 40h | 2,142.4 | 2,142.4 |
| 217 | 4.1.2.1.5.1 | Refinar Diagramas de Clases de Análisis | 1.67d | 2018-07-10 | 2018-07-12 | 210FS+1d | 2018-10-18 | 2018-10-22 | 1.67d | 9.38d | 5.67d | Ingeniero de Casos de Uso | 8h | 412 | 412 |
| 218 | 4.1.2.1.5.2 | Refinar Diagramas de Colaboración | 3.33d | 2018-07-16 | 2018-07-23 | 211FS+1d | 2018-10-25 | 2018-10-31 | 3.33d | 4.38d | 0.67d | Ingeniero de Casos de Uso | 16h | 824 | 824 |
| 219 | 4.1.2.1.5.3 | Refinar BD | 1d | 2018-07-20 | 2018-07-24 | 215FS+1d | 2018-10-31 | 2018-11-01 | 1d | 3.71d |  | Gestor de BD | 8h | 453.2 | 453.2 |
| 220 | 4.1.2.1.5.4 | Refinar Paquetes de Análisis | 1d | 2018-07-18 | 2018-07-19 | 213FS+1d | 2018-10-26 | 2018-10-30 | 1d | 5.71d |  | Ingeniero de Componentes | 8h | 453.2 | 453.2 |
| 221 | 4.1.3 | **Workflow de Diseño** | 24d | 2018-07-24 | 2018-09-10 | 204 | 2018-11-01 | 2018-12-20 | 24d | 28.79d | 0d |  | 416h | 24,122.6 | 24,122.6 |
| 222 | 4.1.3.1 | **Diseño de la Arquitectura** | 6d | 2018-07-24 | 2018-08-03 |  | 2018-11-01 | 2018-11-14 | 6d | 28.79d |  |  | 72h | 4,449.6 | 4,449.6 |
| 223 | 4.1.3.1.1 | Identifica Clases de Diseño | 6d | 2018-07-24 | 2018-08-03 | 217, 218 | 2018-11-01 | 2018-11-14 | 6d | 28.79d | 0d | Arquitecto | 48h | 2,966.4 | 2,966.4 |
| 224 | 4.1.3.1.2 | Identificar Paquetes de Diseño | 3d | 2018-07-24 | 2018-07-30 | 217, 218 | 2018-11-01 | 2018-11-08 | 3d | 49.79d |  | Arquitecto | 24h | 1,483.2 | 1,483.2 |
| 225 | 4.1.3.2 | **Diseño de Casos de Uso** | 13d | 2018-08-03 | 2018-08-30 |  | 2018-11-14 | 2018-12-11 | 13d | 28.79d |  |  | 216h | 12,236.4 | 12,236.4 |
| 226 | 4.1.3.2.1 | Diagramas de Clases de Diseño | 9d | 2018-08-03 | 2018-08-22 | 223 | 2018-11-14 | 2018-12-03 | 9d | 32.79d | 0d | Ingeniero de Casos de Uso [50%]; Analista de Sistemas [50%] | 72h | 4,078.8 | 4,078.8 |
| 227 | 4.1.3.2.2 | Diagramas de Colaboración | 13d | 2018-08-03 | 2018-08-30 | 223 | 2018-11-14 | 2018-12-11 | 13d | 28.79d | 0d | Ingeniero de Casos de Uso [50%]; Analista de Sistemas [50%] | 104h | 5,891.6 | 5,891.6 |
| 228 | 4.1.3.2.3 | Diagrama de Despliegue | 3d | 2018-08-03 | 2018-08-10 | 223 | 2018-11-14 | 2018-11-20 | 3d | 43.29d | 0d | Ingeniero de Casos de Uso [50%]; Analista de Sistemas [50%] | 24h | 1,359.6 | 1,359.6 |
| 229 | 4.1.3.2.4 | Diagramas de Estado | 2d | 2018-08-03 | 2018-08-08 | 223 | 2018-11-14 | 2018-11-19 | 2d | 43.79d | 0d | Ingeniero de Casos de Uso [50%]; Analista de Sistemas [50%] | 16h | 906.4 | 906.4 |

| ID | WBS | Task | Duration | Start | Finish | Predecessors | Baseline start | Baseline finish | Baseline duration | Total slack | Free slack | Resources | Work | Cost | Baseline cost |
| --- | --- | --- | --- | --- | --- | --- | --- | --- | --- | --- | --- | --- | --- | --- | --- |
| 230 | 4.1.3.3 | **Diseño de Paquetes** | 2d | 2018-08-30 | 2018-09-04 |  | 2018-12-11 | 2018-12-13 | 2d | 31.29d |  |  | 16h | 906.4 | 906.4 |
| 231 | 4.1.3.3.1 | Paquetes de Diseño | 2d | 2018-08-30 | 2018-09-04 | 226, 227 | 2018-12-11 | 2018-12-13 | 2d | 31.29d | 0d | Ingeniero de Componentes | 16h | 906.4 | 906.4 |
| 232 | 4.1.3.4 | **Diseño de Datos** | 3d | 2018-08-30 | 2018-09-05 |  | 2018-12-11 | 2018-12-17 | 3d | 28.79d |  |  | 24h | 1,359.6 | 1,359.6 |
| 233 | 4.1.3.4.1 | Diseño de la BD | 3d | 2018-08-30 | 2018-09-05 | 226, 227 | 2018-12-11 | 2018-12-17 | 3d | 28.79d | 0d | Gestor de BD | 24h | 1,359.6 | 1,359.6 |
| 234 | 4.1.3.5 | **Refinar el Diseño** | 16d | 2018-08-08 | 2018-09-10 |  | 2018-11-19 | 2018-12-20 | 16d | 28.79d |  |  | 88h | 5,170.6 | 5,170.6 |
| 235 | 4.1.3.5.1 | Refinar Diagramas de Clases de Diseño | 1.5d | 2018-08-22 | 2018-08-24 | 226 | 2018-12-03 | 2018-12-05 | 1.5d | 36.29d |  | Ingeniero de Casos de Uso; Analista de Sistemas | 24h | 1,421.4 | 1,421.4 |
| 236 | 4.1.3.5.2 | Refinar Diagramas de Colaboración | 1d | 2018-08-30 | 2018-08-31 | 227 | 2018-12-11 | 2018-12-12 | 1d | 32.79d |  | Ingeniero de Casos de Uso; Analista de Sistemas | 16h | 947.6 | 947.6 |
| 237 | 4.1.3.5.3 | Refinar Diagrama de Despliegue | 0.5d | 2018-08-10 | 2018-08-10 | 228 | 2018-11-20 | 2018-11-21 | 0.5d | 43.29d |  | Ingeniero de Casos de Uso; Analista de Sistemas | 8h | 473.8 | 473.8 |
| 238 | 4.1.3.5.4 | Refinar Diagramas de Estado | 1d | 2018-08-08 | 2018-08-10 | 229 | 2018-11-19 | 2018-11-20 | 1d | 43.79d |  | Ingeniero de Casos de Uso; Analista de Sistemas | 16h | 947.6 | 947.6 |
| 239 | 4.1.3.5.5 | Refinar BD | 2d | 2018-09-05 | 2018-09-10 | 233 | 2018-12-17 | 2018-12-20 | 2d | 28.79d |  | Gestor de BD | 16h | 906.4 | 906.4 |
| 240 | 4.1.3.5.6 | Refinar Paquetes de Diseño | 0.5d | 2018-09-04 | 2018-09-05 | 231 | 2018-12-13 | 2018-12-14 | 0.5d | 31.29d |  | Ingeniero de Componentes; Analista de Sistemas | 8h | 473.8 | 473.8 |
| 241 | 4.1.4 | **Workflow de Implementación y Pruebas** | 19d | 2018-09-10 | 2018-10-17 | 221 | 2018-12-20 | 2019-01-28 | 19d | 28.79d | 0d |  | 280h | 14,420 | 14,420 |
| 242 | 4.1.4.1 | Desarrollo de estructura de aplicación | 15d | 2018-09-14 | 2018-10-16 | 243 | 2018-12-26 | 2019-01-24 | 15d | 28.79d | 0d | Implementador [200%] | 240h | 12,360 | 12,360 |
| 243 | 4.1.4.2 | Planeación de la integración de Sistemas | 2d | 2018-09-12 | 2018-09-14 | 244 | 2018-12-21 | 2018-12-26 | 2d | 28.79d | 0d | Implementador | 16h | 824 | 824 |
| 244 | 4.1.4.3 | Plan de Pruebas | 1d | 2018-09-10 | 2018-09-12 |  | 2018-12-20 | 2018-12-21 | 1d | 28.79d | 0d | Implementador | 8h | 412 | 412 |
| 245 | 4.1.4.4 | Integración de Sistemas | 1d | 2018-10-16 | 2018-10-17 | 242 | 2019-01-24 | 2019-01-28 | 1d | 28.79d |  | Implementador | 8h | 412 | 412 |
| 246 | 4.1.4.5 | Ejecución de Pruebas | 1d | 2018-10-16 | 2018-10-17 | 242 | 2019-01-24 | 2019-01-28 | 1d | 28.79d |  | Implementador | 8h | 412 | 412 |
| 247 | 4.2 | **Iteración 5** | 65.33d | 2018-07-24 | 2018-11-30 | 204 | 2018-11-01 | 2019-03-13 | 65.33d | 3.71d | 0d |  | 936h | 51,438.2 | 51,438.2 |
| 248 | 4.2.1 | **Workflow de Análisis** | 22.33d | 2018-07-24 | 2018-09-06 |  | 2018-11-01 | 2018-12-17 | 22.33d | 3.71d | 0d |  | 240h | 12,895.6 | 12,895.6 |
| 249 | 4.2.1.1 | **Análisis del Comportamiento** | 22.33d | 2018-07-24 | 2018-09-06 |  | 2018-11-01 | 2018-12-17 | 22.33d | 3.71d |  |  | 240h | 12,895.6 | 12,895.6 |
| 250 | 4.2.1.1.1 | **Análisis de la Arquitectura** | 7d | 2018-07-24 | 2018-08-07 |  | 2018-11-01 | 2018-11-15 | 7d | 3.71d |  |  | 56h | 3,172.4 | 3,172.4 |
| 251 | 4.2.1.1.1.1 | Identifica Clases de Análisis | 5d | 2018-07-24 | 2018-08-02 |  | 2018-11-01 | 2018-11-13 | 5d | 3.71d | 0d | Arquitecto | 40h | 2,266 | 2,266 |
| 252 | 4.2.1.1.1.2 | Identificar Paquetes de Análisis | 2d | 2018-08-02 | 2018-08-07 | 251 | 2018-11-13 | 2018-11-15 | 2d | 19.04d |  | Arquitecto | 16h | 906.4 | 906.4 |
| 253 | 4.2.1.1.2 | **Análisis de Casos de Uso** | 13.33d | 2018-08-01 | 2018-08-28 |  | 2018-11-09 | 2018-12-06 | 13.33d | 3.71d |  |  | 112h | 5,768 | 5,768 |
| 254 | 4.2.1.1.2.1 | Diagramas de Clases de Análisis | 10d | 2018-08-01 | 2018-08-21 | 251FS-1d | 2018-11-09 | 2018-11-29 | 10d | 7.04d | 0d | Ingeniero de Casos de Uso | 48h | 2,472 | 2,472 |
| 255 | 4.2.1.1.2.2 | Diagramas de Colaboración | 13.33d | 2018-08-01 | 2018-08-28 | 251FS-1d | 2018-11-09 | 2018-12-06 | 13.33d | 3.71d | 0d | Ingeniero de Casos de Uso | 64h | 3,296 | 3,296 |

| ID | WBS | Task | Duration | Start | Finish | Predecessors | Baseline start | Baseline finish | Baseline duration | Total slack | Free slack | Resources | Work | Cost | Baseline cost |
| --- | --- | --- | --- | --- | --- | --- | --- | --- | --- | --- | --- | --- | --- | --- | --- |
| 256 | 4.2.1.1.3 | **Análisis de Paquetes** | 1d | 2018-08-28 | 2018-08-29 |  | 2018-12-06 | 2018-12-07 | 1d | 5.71d |  |  | 8h | 453.2 | 453.2 |
| 257 | 4.2.1.1.3.1 | Paquetes de Análisis | 1d | 2018-08-28 | 2018-08-29 | 254, 255 | 2018-12-06 | 2018-12-07 | 1d | 5.71d | 0d | Ingeniero de Componentes | 8h | 453.2 | 453.2 |
| 258 | 4.2.1.1.4 | **Análisis de Datos** | 3d | 2018-08-28 | 2018-09-03 |  | 2018-12-06 | 2018-12-12 | 3d | 3.71d |  |  | 24h | 1,359.6 | 1,359.6 |
| 259 | 4.2.1.1.4.1 | Análisis de la BD | 3d | 2018-08-28 | 2018-09-03 | 254, 255 | 2018-12-06 | 2018-12-12 | 3d | 3.71d | 0d | Gestor de BD | 24h | 1,359.6 | 1,359.6 |
| 260 | 4.2.1.1.5 | **Refinar el Análisis** | 7.33d | 2018-08-22 | 2018-09-06 |  | 2018-12-03 | 2018-12-17 | 7.33d | 3.71d |  |  | 40h | 2,142.4 | 2,142.4 |
| 261 | 4.2.1.1.5.1 | Refinar Diagramas de Clases de Análisis | 1.67d | 2018-08-22 | 2018-08-27 | 254FS+1d | 2018-12-03 | 2018-12-05 | 1.67d | 9.38d | 5.67d | Ingeniero de Casos de Uso | 8h | 412 | 412 |
| 262 | 4.2.1.1.5.2 | Refinar Diagramas de Colaboración | 3.33d | 2018-08-29 | 2018-09-05 | 255FS+1d | 2018-12-07 | 2018-12-14 | 3.33d | 4.38d | 0.67d | Ingeniero de Casos de Uso | 16h | 824 | 824 |
| 263 | 4.2.1.1.5.3 | Refinar BD | 1d | 2018-09-05 | 2018-09-06 | 259FS+1d | 2018-12-14 | 2018-12-17 | 1d | 3.71d |  | Gestor de BD | 8h | 453.2 | 453.2 |
| 264 | 4.2.1.1.5.4 | Refinar Paquetes de Análisis | 1d | 2018-08-31 | 2018-09-03 | 257FS+1d | 2018-12-11 | 2018-12-12 | 1d | 5.71d |  | Ingeniero de Componentes | 8h | 453.2 | 453.2 |
| 265 | 4.2.2 | **Workflow de Diseño** | 24d | 2018-09-06 | 2018-10-24 | 248 | 2018-12-17 | 2019-02-01 | 24d | 3.71d | 0d |  | 416h | 24,122.6 | 24,122.6 |
| 266 | 4.2.2.1 | **Diseño de la Arquitectura** | 6d | 2018-09-06 | 2018-09-19 |  | 2018-12-17 | 2018-12-28 | 6d | 3.71d |  |  | 72h | 4,449.6 | 4,449.6 |
| 267 | 4.2.2.1.1 | Identifica Clases de Diseño | 6d | 2018-09-06 | 2018-09-19 | 261, 262 | 2018-12-17 | 2018-12-28 | 6d | 3.71d | 0d | Arquitecto | 48h | 2,966.4 | 2,966.4 |
| 268 | 4.2.2.1.2 | Identificar Paquetes de Diseño | 3d | 2018-09-06 | 2018-09-12 | 261, 262 | 2018-12-17 | 2018-12-21 | 3d | 24.71d |  | Arquitecto | 24h | 1,483.2 | 1,483.2 |
| 269 | 4.2.2.2 | **Diseño de Casos de Uso** | 13d | 2018-09-19 | 2018-10-15 |  | 2018-12-28 | 2019-01-23 | 13d | 3.71d |  |  | 216h | 12,236.4 | 12,236.4 |
| 270 | 4.2.2.2.1 | Diagramas de Clases de Diseño | 9d | 2018-09-19 | 2018-10-05 | 267 | 2018-12-28 | 2019-01-16 | 9d | 7.71d | 0d | Ingeniero de Casos de Uso [50%]; Analista de Sistemas [50%] | 72h | 4,078.8 | 4,078.8 |
| 271 | 4.2.2.2.2 | Diagramas de Colaboración | 13d | 2018-09-19 | 2018-10-15 | 267 | 2018-12-28 | 2019-01-23 | 13d | 3.71d | 0d | Ingeniero de Casos de Uso [50%]; Analista de Sistemas [50%] | 104h | 5,891.6 | 5,891.6 |
| 272 | 4.2.2.2.3 | Diagrama de Despliegue | 3d | 2018-09-19 | 2018-09-25 | 267 | 2018-12-28 | 2019-01-03 | 3d | 18.21d | 0d | Ingeniero de Casos de Uso [50%]; Analista de Sistemas [50%] | 24h | 1,359.6 | 1,359.6 |
| 273 | 4.2.2.2.4 | Diagramas de Estado | 2d | 2018-09-19 | 2018-09-21 | 267 | 2018-12-28 | 2019-01-02 | 2d | 18.71d | 0d | Ingeniero de Casos de Uso [50%]; Analista de Sistemas [50%] | 16h | 906.4 | 906.4 |
| 274 | 4.2.2.3 | **Diseño de Paquetes** | 2d | 2018-10-15 | 2018-10-18 |  | 2019-01-23 | 2019-01-28 | 2d | 6.21d |  |  | 16h | 906.4 | 906.4 |
| 275 | 4.2.2.3.1 | Paquetes de Diseño | 2d | 2018-10-15 | 2018-10-18 | 270, 271 | 2019-01-23 | 2019-01-28 | 2d | 6.21d | 0d | Ingeniero de Componentes | 16h | 906.4 | 906.4 |
| 276 | 4.2.2.4 | **Diseño de Datos** | 3d | 2018-10-15 | 2018-10-19 |  | 2019-01-23 | 2019-01-30 | 3d | 3.71d |  |  | 24h | 1,359.6 | 1,359.6 |
| 277 | 4.2.2.4.1 | Diseño de la BD | 3d | 2018-10-15 | 2018-10-19 | 270, 271 | 2019-01-23 | 2019-01-30 | 3d | 3.71d | 0d | Gestor de BD | 24h | 1,359.6 | 1,359.6 |
| 278 | 4.2.2.5 | **Refinar el Diseño** | 16d | 2018-09-21 | 2018-10-24 |  | 2019-01-02 | 2019-02-01 | 16d | 3.71d |  |  | 88h | 5,170.6 | 5,170.6 |
| 279 | 4.2.2.5.1 | Refinar Diagramas de Clases de Diseño | 1.5d | 2018-10-05 | 2018-10-10 | 270 | 2019-01-16 | 2019-01-18 | 1.5d | 11.21d |  | Ingeniero de Casos de Uso; Analista de Sistemas | 24h | 1,421.4 | 1,421.4 |
| 280 | 4.2.2.5.2 | Refinar Diagramas de Colaboración | 1d | 2018-10-15 | 2018-10-17 | 271 | 2019-01-23 | 2019-01-25 | 1d | 7.71d |  | Ingeniero de Casos de Uso; Analista de Sistemas | 16h | 947.6 | 947.6 |
| 281 | 4.2.2.5.3 | Refinar Diagrama de Despliegue | 0.5d | 2018-09-25 | 2018-09-26 | 272 | 2019-01-03 | 2019-01-04 | 0.5d | 18.21d |  | Ingeniero de Casos de Uso; Analista de Sistemas | 8h | 473.8 | 473.8 |
| 282 | 4.2.2.5.4 | Refinar Diagramas de Estado | 1d | 2018-09-21 | 2018-09-25 | 273 | 2019-01-02 | 2019-01-03 | 1d | 18.71d |  | Ingeniero de Casos de Uso; Analista de Sistemas | 16h | 947.6 | 947.6 |
| 283 | 4.2.2.5.5 | Refinar BD | 2d | 2018-10-19 | 2018-10-24 | 277 | 2019-01-30 | 2019-02-01 | 2d | 3.71d |  | Gestor de BD | 16h | 906.4 | 906.4 |
| 284 | 4.2.2.5.6 | Refinar Paquetes de Diseño | 0.5d | 2018-10-18 | 2018-10-19 | 275 | 2019-01-28 | 2019-01-29 | 0.5d | 6.21d |  | Ingeniero de Componentes; Analista de Sistemas | 8h | 473.8 | 473.8 |

| ID | WBS | Task | Duration | Start | Finish | Predecessors | Baseline start | Baseline finish | Baseline duration | Total slack | Free slack | Resources | Work | Cost | Baseline cost |
| --- | --- | --- | --- | --- | --- | --- | --- | --- | --- | --- | --- | --- | --- | --- | --- |
| 285 | 4.2.3 | **Workflow de Implementación y Pruebas** | 19d | 2018-10-24 | 2018-11-30 | 265 | 2019-02-01 | 2019-03-13 | 19d | 3.71d | 0d |  | 280h | 14,420 | 14,420 |
| 286 | 4.2.3.1 | Desarrollo de estructura de aplicación | 15d | 2018-10-31 | 2018-11-29 | 287 | 2019-02-08 | 2019-03-11 | 15d | 3.71d | 0d | Implementador [200%] | 240h | 12,360 | 12,360 |
| 287 | 4.2.3.2 | Planeación de la integración de Sistemas | 2d | 2018-10-26 | 2018-10-31 | 288 | 2019-02-05 | 2019-02-08 | 2d | 3.71d | 0d | Implementador | 16h | 824 | 824 |
| 288 | 4.2.3.3 | Plan de Pruebas | 1d | 2018-10-24 | 2018-10-26 |  | 2019-02-01 | 2019-02-05 | 1d | 3.71d | 0d | Implementador | 8h | 412 | 412 |
| 289 | 4.2.3.4 | Integración de Sistemas | 1d | 2018-11-29 | 2018-11-30 | 286 | 2019-03-11 | 2019-03-13 | 1d | 3.71d |  | Implementador | 8h | 412 | 412 |
| 290 | 4.2.3.5 | Ejecución de Pruebas | 1d | 2018-11-29 | 2018-11-30 | 286 | 2019-03-11 | 2019-03-13 | 1d | 3.71d |  | Implementador | 8h | 412 | 412 |
| 291 | 5 | **Fase de Transición** | 6.46d | 2018-11-30 | 2018-12-13 | 247 | 2019-03-13 | 2019-03-26 | 6.75d | 0d |  |  | 72h | 5,191.2 | 5,191.2 |
| 292 | 5.1 | Instalación del Software | 1d | 2018-12-10 | 2018-12-11 |  | 2019-03-22 | 2019-03-25 | 1d | 2d |  | Administrador de Proyecto | 8h | 576.8 | 576.8 |
| 293 | 5.2 | Migración | 4d | 2018-11-30 | 2018-12-06 |  | 2019-03-13 | 2019-03-19 | 4d | 3.5d |  | Administrador de Proyecto | 32h | 2,307.2 | 2,307.2 |
| 294 | 5.3 | Capacitación | 3d | 2018-12-06 | 2018-12-11 |  | 2019-03-19 | 2019-03-22 | 3d | 1.25d |  | Administrador de Proyecto | 24h | 1,730.4 | 1,730.4 |
| 295 | 5.4 | Comprobación de Aceptación | 1d | 2018-12-13 | 2018-12-13 |  | 2019-03-25 | 2019-03-26 | 1d | 0d |  | Administrador de Proyecto | 8h | 576.8 | 576.8 |
